# Cronograma [CrossFit Itajubá] FINALIZADO

Schedule from MS Project, 2017-08-10 to 2017-11-03, costs in R$, A marks actual dates.

## Calendars

- Padrão: Mon-Fri 08:00-12:00, 13:00-17:00; Sat-Sun off.

## Resources

| Resource | Rate |
| --- | --- |
| Gabriela | 50 |
| Adriana | 50 |
| GP Externo | 100 |
| Juliana | 50 |
| Luã | 90 |
| Beatriz | 50 |

## Schedule

| ID | WBS | Task | Duration | Start | Finish | Predecessors | Complete | Remaining | Baseline start | Baseline finish | Baseline duration | Constraint | Resources | Work | Actual work | Cost | Baseline cost | Actual cost |
| --- | --- | --- | --- | --- | --- | --- | --- | --- | --- | --- | --- | --- | --- | --- | --- | --- | --- | --- |
| 1 | 1 | **Projeto - Miau Au** | 62.12d | 2017-08-10 08:00 A | 2017-11-03 18:00 |  | 82% | 10.95d | 2017-08-10 08:00 | 2017-11-15 18:00 | 70d? |  |  | 214h | 178h | 16,220 | 14,420 | 13,350 |
| 2 | 1.1 | **Prospecção** | 4.5d | 2017-08-10 08:00 A | 2017-08-16 12:00 A |  | 100% |  | 2017-08-10 08:00 | 2017-08-16 12:00 | 4.5d |  |  | 37h | 37h | 2,300 | 2,300 | 2,300 |
| 3 | 1.1.1 | **PTEC -Proposta Técnica** | 1.5d | 2017-08-10 08:00 A | 2017-08-11 12:00 A |  | 100% |  | 2017-08-10 08:00 | 2017-08-11 12:00 | 1.5d |  |  | 8h | 8h | 400 | 400 | 400 |
| 4 | 1.1.1.1 | Redigir PTEC | 0.62d | 2017-08-10 08:00 A | 2017-08-10 14:00 A |  | 100% |  | 2017-08-10 08:00 | 2017-08-10 14:00 | 0.62d |  | Gabriela | 5h | 5h | 250 | 250 | 250 |
| 5 | 1.1.1.2 | Revisar PTEC | 0.38d | 2017-08-11 09:00 A | 2017-08-11 12:00 A | 4 | 100% |  | 2017-08-11 09:00 | 2017-08-11 12:00 | 0.38d |  | Adriana | 3h | 3h | 150 | 150 | 150 |
| 6 | 1.1.2 | **ETP - Estimativa de Tamanho Preliminar** | 1.38d | 2017-08-11 09:00 A | 2017-08-14 12:00 A |  | 100% |  | 2017-08-11 09:00 | 2017-08-14 12:00 | 1.38d |  |  | 10h | 10h | 500 | 500 | 500 |
| 7 | 1.1.2.1 | Elaborar ETP | 0.88d | 2017-08-11 09:00 A | 2017-08-11 17:00 A | 5 | 100% |  | 2017-08-11 09:00 | 2017-08-11 17:00 | 0.88d |  | Adriana | 7h | 7h | 350 | 350 | 350 |
| 8 | 1.1.2.2 | Revisar ETP | 0.38d | 2017-08-14 09:00 A | 2017-08-14 12:00 A | 7 | 100% |  | 2017-08-14 09:00 | 2017-08-14 12:00 | 0.38d |  | Beatriz | 3h | 3h | 150 | 150 | 150 |
| 9 | 1.1.3 | **CRP e ORP - Cronograma e Orçamento Preliminares** | 1.38d | 2017-08-14 09:00 A | 2017-08-15 12:00 A |  | 100% |  | 2017-08-14 09:00 | 2017-08-15 12:00 | 1.38d |  |  | 10h | 10h | 500 | 500 | 500 |
| 10 | 1.1.3.1 | Elaborar CRP e ORP | 0.88d | 2017-08-14 09:00 A | 2017-08-14 17:00 A | 8 | 100% |  | 2017-08-14 09:00 | 2017-08-14 17:00 | 0.88d |  | Beatriz | 7h | 7h | 350 | 350 | 350 |
| 11 | 1.1.3.2 | Revisar CRP e ORP | 0.38d | 2017-08-15 09:00 A | 2017-08-15 12:00 A | 10 | 100% |  | 2017-08-15 09:00 | 2017-08-15 12:00 | 0.38d |  | Juliana | 3h | 3h | 150 | 150 | 150 |
| 12 | 1.1.4 | **Aprovações - Prospecção** | 0.38d | 2017-08-16 09:00 A | 2017-08-16 12:00 A |  | 100% |  | 2017-08-16 09:00 | 2017-08-16 12:00 | 0.38d |  |  | 9h | 9h | 900 | 900 | 900 |
| 13 | 1.1.4.1 | Aprovar PTEC | 0.38d | 2017-08-16 09:00 A | 2017-08-16 12:00 A | 11 | 100% |  | 2017-08-16 09:00 | 2017-08-16 12:00 | 0.38d |  | GP Externo | 3h | 3h | 300 | 300 | 300 |
| 14 | 1.1.4.2 | Aprovar ETP | 0.38d | 2017-08-16 09:00 A | 2017-08-16 12:00 A | 13 | 100% |  | 2017-08-16 09:00 | 2017-08-16 12:00 | 0.38d | finish no earlier than 2017-08-15 18:00 | GP Externo | 3h | 3h | 300 | 300 | 300 |
| 15 | 1.1.4.3 | Aprovar CRP e ORP | 0.38d | 2017-08-16 09:00 A | 2017-08-16 12:00 A | 14 | 100% |  | 2017-08-16 09:00 | 2017-08-16 12:00 | 0.38d | finish no earlier than 2017-08-16 18:00 | GP Externo | 3h | 3h | 300 | 300 | 300 |
| 16 | 1.2 | **Planejamento** | 4.38d | 2017-08-17 09:00 A | 2017-08-23 12:00 A |  | 100% |  | 2017-08-17 09:00 | 2017-08-23 12:00 | 4.38d |  |  | 52h | 52h | 3,200 | 3,200 | 3,200 |
| 17 | 1.2.1 | **EAP** | 0.88d | 2017-08-17 09:00 A | 2017-08-17 17:00 A |  | 100% |  | 2017-08-17 09:00 | 2017-08-17 17:00 | 0.88d |  |  | 10h | 10h | 500 | 500 | 500 |
| 18 | 1.2.1.1 | Elaborar EAP | 0.88d | 2017-08-17 09:00 A | 2017-08-17 17:00 A | 15 | 100% |  | 2017-08-17 09:00 | 2017-08-17 17:00 | 0.88d |  | Gabriela | 7h | 7h | 350 | 350 | 350 |
| 19 | 1.2.1.2 | Revisar EAP | 0.38d | 2017-08-17 09:00 A | 2017-08-17 12:00 A | 18 | 100% |  | 2017-08-17 09:00 | 2017-08-17 12:00 | 0.38d |  | Adriana | 3h | 3h | 150 | 150 | 150 |
| 20 | 1.2.2 | **Plano de Projeto** | 1.38d | 2017-08-17 09:00 A | 2017-08-18 12:00 A |  | 100% |  | 2017-08-17 09:00 | 2017-08-18 12:00 | 1.38d |  |  | 10h | 10h | 500 | 500 | 500 |
| 21 | 1.2.2.1 | Elaborar Plano de Projeto | 0.88d | 2017-08-17 09:00 A | 2017-08-17 17:00 A | 19 | 100% |  | 2017-08-17 09:00 | 2017-08-17 17:00 | 0.88d |  | Adriana | 7h | 7h | 350 | 350 | 350 |
| 22 | 1.2.2.2 | Revisar Plano de Projeto | 0.38d | 2017-08-18 09:00 A | 2017-08-18 12:00 A | 21 | 100% |  | 2017-08-18 09:00 | 2017-08-18 12:00 | 0.38d |  | Beatriz | 3h | 3h | 150 | 150 | 150 |
| 23 | 1.2.3 | **ETD - Estimativa de Tamanho Definitiva** | 1.38d | 2017-08-18 09:00 A | 2017-08-21 12:00 A |  | 100% |  | 2017-08-18 09:00 | 2017-08-21 12:00 | 1.38d |  |  | 10h | 10h | 500 | 500 | 500 |
| 24 | 1.2.3.1 | Elaborar EDT | 0.88d | 2017-08-18 09:00 A | 2017-08-18 17:00 A | 22 | 100% |  | 2017-08-18 09:00 | 2017-08-18 17:00 | 0.88d |  | Beatriz | 7h | 7h | 350 | 350 | 350 |
| 25 | 1.2.3.2 | Revisar EDT | 0.38d | 2017-08-21 09:00 A | 2017-08-21 12:00 A | 24 | 100% |  | 2017-08-21 09:00 | 2017-08-21 12:00 | 0.38d |  | Juliana | 3h | 3h | 150 | 150 | 150 |

| ID | WBS | Task | Type | Duration | Start | Finish | Predecessors | Complete | Remaining | Actual start | Actual finish | Baseline start | Baseline finish | Baseline duration | Constraint | Resources | Work | Actual work | Cost | Baseline cost | Actual cost |
| --- | --- | --- | --- | --- | --- | --- | --- | --- | --- | --- | --- | --- | --- | --- | --- | --- | --- | --- | --- | --- | --- |
| 26 | 1.2.4 | **CRD e ORD - Cronograma e Orçamento Definitivo** |  | 1.38d | 2017-08-21 09:00 A | 2017-08-22 12:00 A |  | 100% |  |  |  | 2017-08-21 09:00 | 2017-08-22 12:00 | 1.38d |  |  | 10h | 10h | 500 | 500 | 500 |
| 27 | 1.2.4.1 | Elaborar CRD e ORD |  | 0.88d | 2017-08-21 09:00 A | 2017-08-21 17:00 A | 25 | 100% |  |  |  | 2017-08-21 09:00 | 2017-08-21 17:00 | 0.88d |  | Juliana | 7h | 7h | 350 | 350 | 350 |
| 28 | 1.2.4.2 | Revisar CRD e ORD |  | 0.38d | 2017-08-22 09:00 A | 2017-08-22 12:00 A | 27 | 100% |  |  |  | 2017-08-22 09:00 | 2017-08-22 12:00 | 0.38d |  | Gabriela | 3h | 3h | 150 | 150 | 150 |
| 29 | 1.2.5 | **Aprovações - Planejamento** |  | 0.38d | 2017-08-23 09:00 A | 2017-08-23 12:00 A |  | 100% |  |  |  | 2017-08-23 09:00 | 2017-08-23 12:00 | 0.38d |  |  | 12h | 12h | 1,200 | 1,200 | 1,200 |
| 30 | 1.2.5.1 | Aprovar EAP |  | 0.38d | 2017-08-23 09:00 A | 2017-08-23 12:00 A | 28 | 100% |  |  |  | 2017-08-23 09:00 | 2017-08-23 12:00 | 0.38d |  | GP Externo | 3h | 3h | 300 | 300 | 300 |
| 31 | 1.2.5.2 | Aprovar Plano de Projeto |  | 0.38d | 2017-08-23 09:00 A | 2017-08-23 12:00 A | 30 | 100% |  |  |  | 2017-08-23 09:00 | 2017-08-23 12:00 | 0.38d |  | GP Externo | 3h | 3h | 300 | 300 | 300 |
| 32 | 1.2.5.3 | Aprovar ETD |  | 0.38d | 2017-08-23 09:00 A | 2017-08-23 12:00 A | 31 | 100% |  |  |  | 2017-08-23 09:00 | 2017-08-23 12:00 | 0.38d |  | GP Externo | 3h | 3h | 300 | 300 | 300 |
| 33 | 1.2.5.4 | Aprovar CRD e ORD |  | 0.38d | 2017-08-23 09:00 A | 2017-08-23 12:00 A | 32 | 100% |  |  |  | 2017-08-23 09:00 | 2017-08-23 12:00 | 0.38d |  | GP Externo | 3h | 3h | 300 | 300 | 300 |
| 34 | 1.3 | **Analise** |  | 1.54d? | 2017-08-24 09:00 A | 2017-08-25 14:20 A |  | 100% |  |  |  | 2017-08-24 09:00 | 2017-08-25 14:20 | 1.54d? |  |  | 26h | 26h | 1,300 | 1,300 | 1,300 |
| 35 | 1.3.1 | **Documento de Requisitos** |  | 0.88d | 2017-08-24 09:00 A | 2017-08-24 18:00 A |  | 100% |  |  |  | 2017-08-24 09:00 | 2017-08-24 18:00 | 0.88d |  |  | 16h | 16h | 800 | 800 | 800 |
| 36 | 1.3.1.1 | Especificar Requisitos Funcionais do Sistema |  | 0.31d | 2017-08-24 09:00 A | 2017-08-24 18:00 A | 33 | 100% |  |  |  | 2017-08-24 09:00 | 2017-08-24 18:00 | 0.31d | finish no earlier than 2017-09-01 18:00 | Adriana; Beatriz | 5h | 5h | 250 | 250 | 250 |
| 37 | 1.3.1.2 | Elaborar DRE |  | 0.44d | 2017-08-24 09:00 A | 2017-08-24 13:30 A | 36 | 100% |  |  |  | 2017-08-24 09:00 | 2017-08-24 13:30 | 0.44d | finish no earlier than 2017-09-08 18:00 | Gabriela; Adriana; Beatriz; Juliana | 7h | 7h | 350 | 350 | 350 |
| 38 | 1.3.1.3 | Realizar correções no DRE |  | 0.5d | 2017-08-24 09:00 A | 2017-08-24 14:00 A | 37 | 100% |  |  |  | 2017-08-24 09:00 | 2017-08-24 14:00 | 0.5d |  | Gabriela | 4h | 4h | 200 | 200 | 200 |
| 39 | 1.3.2 | **Matriz de Rastreabilidade** |  | 0.54d? | 2017-08-25 09:00 A | 2017-08-25 14:20 A |  | 100% |  |  |  | 2017-08-25 09:00 | 2017-08-25 14:20 | 0.54d? |  |  | 10h | 10h | 500 | 500 | 500 |
| 40 | 1.3.2.1 | Elaborar a Matriz |  | 0.29d | 2017-08-25 09:00 A | 2017-08-25 11:20 A | 38 | 100% |  |  |  | 2017-08-25 09:00 | 2017-08-25 11:20 | 0.29d | start no earlier than 2017-08-25 09:00 | Adriana; Beatriz; Juliana | 7h | 7h | 350 | 350 | 350 |
| 41 | 1.3.2.2 | Revistar a Matriz |  | 0.12d? | 2017-08-25 13:20 A | 2017-08-25 14:20 A | 40 | 100% |  |  |  | 2017-08-25 13:20 | 2017-08-25 14:20 | 0.12d? | start no earlier than 2017-08-17 09:00 | Adriana; Beatriz; Juliana | 3h | 3h | 150 | 150 | 150 |
| 42 | 1.4 | **Release** |  | 46.12d | 2017-09-01 08:00 A | 2017-11-03 18:00 |  | 65% | 16.28d |  |  | 2017-09-01 08:00 | 2017-11-15 18:00 | 54d? |  |  | 99h | 63h | 9,420 | 7,620 | 6,550 |
| 43 | 1.4.1 | **Modelagem do Banco de Dados** |  | 9.5d | 2017-09-01 08:00 A | 2017-09-14 12:00 A |  | 100% |  |  |  | 2017-09-01 08:00 | 2017-09-14 12:00 | 9.5d |  |  | 18h | 18h | 900 | 900 | 900 |
| 44 | 1.4.1.1 | Modelo E-R |  | 0.62d | 2017-09-01 08:00 A | 2017-09-01 14:00 A | 41 | 100% |  |  |  | 2017-09-01 08:00 | 2017-09-01 14:00 | 0.62d | finish no earlier than 2017-09-01 18:00 | Juliana | 5h | 5h | 250 | 250 | 250 |
| 45 | 1.4.1.2 | Modelo Lógico |  | 0.62d | 2017-09-12 09:00 A | 2017-09-12 15:00 A | 44 | 100% |  |  |  | 2017-09-12 09:00 | 2017-09-12 15:00 | 0.62d | start no earlier than 2017-09-12 09:00 | Gabriela | 5h | 5h | 250 | 250 | 250 |
| 46 | 1.4.1.3 | Modelo Físico |  | 0.62d | 2017-09-13 09:00 A | 2017-09-13 15:00 A | 45 | 100% |  |  |  | 2017-09-13 09:00 | 2017-09-13 15:00 | 0.62d | start no earlier than 2017-09-13 09:00 | Gabriela | 5h | 5h | 250 | 250 | 250 |
| 47 | 1.4.1.4 | Revisar a modelagem do Banco de Dados |  | 0.38d | 2017-09-14 09:00 A | 2017-09-14 12:00 A | 46 | 100% |  |  |  | 2017-09-14 09:00 | 2017-09-14 12:00 | 0.38d | start no earlier than 2017-09-14 09:00 | Juliana | 3h | 3h | 150 | 150 | 150 |
| 48 | 1.4.2 | **Implementação e Teste** |  | 23d | 2017-10-04 09:00 | 2017-11-03 18:00 |  | 57% | 9.86d | 2017-10-16 09:00 |  | 2017-10-20 09:00 | 2017-11-15 18:00 | 19d |  |  | 81h | 45h | 8,520 | 6,720 | 5,650 |
| 49 | 1.4.2.1 | **Release 1** |  | 4d | 2017-10-16 09:00 A | 2017-10-20 09:00 |  | 100% |  |  | 2017-10-19 15:00 | 2017-10-20 09:00 | 2017-10-24 14:00 | 2.5d? |  |  | 40h | 40h | 5,400 | 1,800 | 5,400 |
| 50 | 1.4.2.1.1 | [RFS001] Publicar Aviso |  | 0.62d? | 2017-10-16 09:00 A | 2017-10-16 15:00 A | 47 | 100% |  |  |  | 2017-10-20 09:00 | 2017-10-20 15:00 | 0.62d? |  | Luã | 5h | 5h | 450 | 450 | 450 |
| 51 | 1.4.2.1.2 | [RFS002] Editar Aviso |  | 0.62d? | 2017-10-16 09:00 A | 2017-10-16 15:00 A | 50 | 100% |  |  |  | 2017-10-20 09:00 | 2017-10-20 15:00 | 0.62d? |  | Luã | 5h | 5h | 450 | 450 | 450 |
| 52 | 1.4.2.1.3 | [RFS003] Deletar Aviso |  | 0.62d? | 2017-10-17 09:00 A | 2017-10-17 15:00 A | 51 | 100% |  |  |  | 2017-10-21 09:00 | 2017-10-23 14:00 | 0.62d? |  | Luã | 5h | 5h | 450 | 450 | 450 |
| 53 | 1.4.2.1.4 | [RFS004] Visualizar Aviso |  | 0.62d? | 2017-10-17 09:00 A | 2017-10-17 15:00 A | 52 | 100% |  |  |  | 2017-10-23 09:00 | 2017-10-23 15:00 | 0.62d? |  | Luã | 5h | 5h | 450 | 450 | 450 |
| 54 | 1.4.2.1.5 | [RFS009] Cadastrar Usuário | manual | 1d | 2017-10-18 09:00 A | 2017-10-19 09:00 A |  | 100% |  |  |  |  |  |  |  | Luã | 5h | 5h | 900 |  | 900 |
| 55 | 1.4.2.1.6 | [RFS010] Consultar Usuário | manual | 0.62d | 2017-10-18 09:00 A | 2017-10-18 15:00 A |  | 100% |  |  |  |  |  |  |  | Luã | 5h | 5h | 900 |  | 900 |
| 56 | 1.4.2.1.7 | [RFS011] Alterar Usuário | manual | 0.62d | 2017-10-19 09:00 A | 2017-10-19 15:00 A |  | 100% |  |  |  |  |  |  |  | Luã | 5h | 5h | 900 |  | 900 |
| 57 | 1.4.2.1.8 | [RFS012] Remover Usuário | manual | 0.62d | 2017-10-19 09:00 A | 2017-10-19 15:00 A |  | 100% |  |  |  |  |  |  |  | Luã | 5h | 5h | 900 |  | 900 |

| ID | WBS | Task | Duration | Start | Finish | Predecessors | Complete | Actual finish | Baseline start | Baseline finish | Baseline duration | Total slack | Free slack | Constraint | Resources | Work | Actual work | Cost | Baseline cost | Actual cost |
| --- | --- | --- | --- | --- | --- | --- | --- | --- | --- | --- | --- | --- | --- | --- | --- | --- | --- | --- | --- | --- |
| 58 | 1.4.2.2 | **Teste** | 0.75d | 2017-10-20 09:00 A | 2017-10-20 16:00 |  | 100% | 2017-10-20 15:00 | 2017-10-24 09:00 | 2017-10-24 16:00 | 0.75d |  |  |  |  | 5h | 5h | 250 | 250 | 250 |
| 59 | 1.4.2.2.1 | Teste e Validação do Release 1 | 0.62d | 2017-10-20 09:00 A | 2017-10-20 15:00 A | 53 | 100% |  | 2017-10-24 09:00 | 2017-10-24 15:00 | 0.62d |  |  | finish no earlier than 2017-10-09 18:00 | Juliana | 5h | 5h | 250 | 250 | 250 |
| 60 | 1.4.2.3 | **Release 2** | 3d | 2017-10-27 09:00 | 2017-10-31 18:00 |  |  |  | 2017-10-27 09:00 | 2017-10-31 14:00 | 2.5d |  |  |  |  | 20h |  | 1,800 | 1,800 |  |
| 61 | 1.4.2.3.1 | [RFS005] Publicar Mensagem | 0.62d | 2017-10-27 09:00 | 2017-10-27 15:00 | 59 |  |  | 2017-10-24 15:00 | 2017-10-25 11:00 | 0.62d | 3.06d | 0d | start no earlier than 2017-10-27 09:00 | Luã | 5h |  | 450 | 450 |  |
| 62 | 1.4.2.3.2 | [RFS006] Editar Mensagem | 0.62d | 2017-10-27 15:00 | 2017-10-30 11:00 | 61 |  |  | 2017-10-27 09:00 | 2017-10-27 15:00 | 0.62d | 3.06d | 0d |  | Luã | 5h |  | 450 | 450 |  |
| 63 | 1.4.2.3.3 | [RFS007] Deletar Mensagem | 0.62d | 2017-10-30 11:00 | 2017-10-30 17:00 | 62 |  |  | 2017-10-27 15:00 | 2017-10-30 11:00 | 0.62d | 3.06d | 0d |  | Luã | 5h |  | 450 | 450 |  |
| 64 | 1.4.2.3.4 | [RFS008] Visualizar Mensagem | 0.62d | 2017-10-31 08:00 | 2017-10-31 14:00 | 63 |  |  | 2017-10-30 11:00 | 2017-10-30 17:00 | 0.62d | 3.06d | 0.5d |  | Luã | 5h |  | 450 | 450 |  |
| 65 | 1.4.2.4 | **Teste** | 1d | 2017-11-01 09:00 | 2017-11-01 18:00 |  |  |  | 2017-10-31 08:00 | 2017-10-31 10:30 | 0.31d |  |  |  |  | 5h |  | 250 | 250 |  |
| 66 | 1.5.1.10 | Teste e Validação do Release 2 | 0.31d | 2017-11-01 09:00 | 2017-11-01 11:30 | 64 |  |  | 2017-10-31 08:00 | 2017-10-31 10:30 | 0.31d | 2.56d |  |  | Adriana; Juliana | 5h |  | 250 | 250 |  |
| 67 | 1.5.1.11 | **Release 3** | 2d | 2017-11-02 09:00 | 2017-11-03 18:00 |  |  |  | 2017-11-03 09:00 | 2017-11-08 17:00 | 3.88d |  |  |  |  | 3h |  | 270 | 2,070 |  |
| 68 | 1.4.2.5.1 | [RFSF013] Avaliar Ferramenta | 1d | 2017-11-02 09:00 | 2017-11-03 09:00 |  |  |  | 2017-11-08 08:00 | 2017-11-08 17:00 | 1d | 0.19d | 0d | start no earlier than 2017-11-02 09:00 | Luã | 3h |  | 270 | 270 |  |
| 69 | 1.4.2.6 | **Teste** | 0.69d | 2017-11-03 09:00 | 2017-11-03 15:30 |  |  |  | 2017-11-09 08:00 | 2017-11-09 14:30 | 0.69d | 0.19d |  |  |  | 8h |  | 550 | 550 |  |
| 70 | 1.4.2.6.1 | Teste e Validação do Release 3 | 0.31d | 2017-11-03 09:00 | 2017-11-03 11:30 | 68 |  |  | 2017-11-09 08:00 | 2017-11-09 10:30 | 0.31d | 0.19d | 0d |  | Adriana; Beatriz | 5h |  | 250 | 250 |  |
| 71 | 1.4.2.6.2 | Aprovação do Documento | 0.38d | 2017-11-03 11:30 | 2017-11-03 15:30 | 70 |  |  | 2017-11-09 10:30 | 2017-11-09 14:30 | 0.38d | 0.19d |  | finish no earlier than 2017-10-25 18:00 | GP Externo | 3h |  | 300 | 300 |  |
